# 2-5-Tender-CS-TS-0

Schedule from MS Project, 2022-01-11 to 2025-05-09, costs in €.

## Calendars

- Standard: Mon-Fri 08:00-12:00, 13:00-17:00; Sat-Sun off.

## Resources

| Resource | Group | Unit | Rate |
| --- | --- | --- | --- |
| Owner Resources | Obs.1 |  |  |
| Turkish Project Engineer | Obs.14 |  | 60 |
| Turkish Mechanical Engineer | Obs.14 |  | 43 |
| Purchasing Agent | Obs.14 |  | 80 |
| Supplier | Obs.14 |  |  |
| S/Contractor | Obs.14 |  |  |
| Team of Turkish Workers (5 Workers each) | Obs.14 |  | 150 |
| Authority | Obs.2 |  |  |
| Swing Bridge Materials | Obs.14 |  |  |
| Project Manager | Obs.14 |  | 180 |
| Ship Freight (Origin China) | Obs.14 | TEU-CN | 1440 |
| Ship Freight (Origin Turkey) | Obs.14 | TEU-TK | 212 |

## Schedule

| ID | WBS | Task | Type | Duration | Start | Finish | Predecessors | Total slack | Free slack | Resources | Work | Cost | Text2 |
| --- | --- | --- | --- | --- | --- | --- | --- | --- | --- | --- | --- | --- | --- |
| 1 | 1 | **Contract Award Phase** |  | 45d | 2022-01-11 | 2022-03-14 |  | 0d |  |  | 360h | 64,800 |  |
| 2 | 1.1 | Award date (M0.1) | milestone | 0d | 2022-01-11 | 2022-01-11 |  | 0d |  |  |  |  |  |
| 3 | 1.2 | Contract Bonds effective |  | 45d | 2022-01-11 | 2022-03-14 | 2 | 0d |  | Project Manager | 360h | 64,800 |  |
| 4 | 1.3 | Notice to proceed (M0.2) | milestone | 0d | 2022-03-14 | 2022-03-14 | 3 | 0d |  |  |  |  |  |
| 5 | 2 | **Final Design Phase** |  | 267d | 2022-01-11 | 2023-01-18 |  | 0d |  |  | 10752h | 358,752 |  |
| 6 | 2.1 | Bored Piles |  | 60d | 2022-08-09 | 2022-10-31 | 10, 11 | 12d | 0d | Owner Resources | 480h |  | 21-01 10 20 15 |
| 7 | 2.2 | Pits and Bases |  | 25d | 2022-11-01 | 2022-12-05 | 6, 15 | 12d | 0d | Owner Resources | 200h |  | 21-01 40 40 |
| 8 | 2.3 | Towers |  | 20d | 2022-12-06 | 2023-01-02 | 7 | 12d |  | Owner Resources | 160h |  | 21-06 10 20 70 |
| 9 | 2.4 | **Site Bridges** |  | 267d | 2022-01-11 | 2023-01-18 |  | 0d |  |  | 9912h | 358,752 | 21-07 20 60 70 |
| 10 | 2.4.1 | Approach Viaduct |  | 90d | 2022-01-11 | 2022-05-16 |  | 72d | 60d | Owner Resources | 720h |  |  |
| 11 | 2.4.2 | Central Cable stayed spans |  | 150d | 2022-01-11 | 2022-08-08 |  | 12d | 0d | Owner Resources | 1200h |  |  |
| 12 | 2.4.3 | **FD-Swing Bridge (M1)** |  | 222d | 2022-03-15 | 2023-01-18 | 4 | 0d |  |  | 7992h | 358,752 |  |
| 13 | 2.4.3.1 | Cylinder and Locking Devices |  | 64d | 2022-06-24 | 2022-09-21 | 15 | 0d |  | Turkish Mechanical Engineer [400%]; Turkish Project Engineer [50%] | 2304h | 103,424 |  |
| 14 | 2.4.3.2 | Machinery Room |  | 85d | 2022-09-22 | 2023-01-18 | 13 | 0d |  | Turkish Mechanical Engineer [400%]; Turkish Project Engineer [50%] | 3060h | 137,360 |  |
| 15 | 2.4.3.3 | Swing Bridge Deck |  | 73d | 2022-03-15 | 2022-06-23 |  | 0d |  | Turkish Mechanical Engineer [400%]; Turkish Project Engineer [50%] | 2628h | 117,968 |  |
| 16 | 3 | **Permitting Phase** |  | 180d | 2023-01-19 | 2023-09-27 | 5 | 0d |  |  | 2160h | 43,200 |  |
| 17 | 3.1 | Site Bridges |  | 180d | 2023-01-19 | 2023-09-27 |  | 0d |  | Turkish Project Engineer [50%]; Owner Resources | 2160h | 43,200 | 21-07 20 60 70 |
| 18 | 4 | **Coordination Phase** |  | 60d | 2023-09-28 | 2023-12-20 | 16 | 362d |  |  | 240h | 14,400 |  |
| 19 | 4.1 | Site Bridges |  | 60d | 2023-09-28 | 2023-12-20 |  | 362d |  | Turkish Project Engineer [50%] | 240h | 14,400 | 21-07 20 60 70 |
| 20 | 5 | **Subcontracting Phase** |  | 175d? | 2022-06-24 | 2023-02-23 |  | 369d |  |  | 496h | 17,920 |  |
| 21 | 5.1 | **Site Bridges** |  | 175d? | 2022-06-24 | 2023-02-23 |  | 369d |  |  | 496h | 17,920 | 21-07 20 60 70 |
| 22 | 5.1.1 | **Swing Bridge** |  | 175d? | 2022-06-24 | 2023-02-23 |  | 369d |  |  | 496h | 17,920 |  |
| 23 | 5.1.1.1 | **Machinery Room** |  | 26d? | 2023-01-19 | 2023-02-23 | 14 | 369d |  |  | 248h | 8,960 |  |
| 24 | 5.1.1.1.1 | RFP |  | 5d? | 2023-01-19 | 2023-01-25 |  | 369d | 0d | Purchasing Agent | 40h | 3,200 |  |
| 25 | 5.1.1.1.2 | BID preparation |  | 15d | 2023-01-26 | 2023-02-15 | 24 | 369d | 0d | S/Contractor | 120h |  |  |
| 26 | 5.1.1.1.3 | BID evaluation |  | 4d? | 2023-02-16 | 2023-02-21 | 25 | 369d | 0d | Purchasing Agent; Turkish Project Engineer | 64h | 4,480 |  |
| 27 | 5.1.1.1.4 | S/Contract execution |  | 2d? | 2023-02-22 | 2023-02-23 | 26 | 369d | 0d | Purchasing Agent; S/Contractor | 24h | 1,280 |  |

| ID | WBS | Task | Duration | Start | Finish | Predecessors | Total slack | Free slack | Resources | Work | Cost | Text2 |
| --- | --- | --- | --- | --- | --- | --- | --- | --- | --- | --- | --- | --- |
| 28 | 5.1.1.2 | **Swing Bridge Deck** | 26d? | 2022-06-24 | 2022-07-29 | 15 | 470d |  |  | 248h | 8,960 |  |
| 29 | 5.1.1.2.1 | RFP | 5d? | 2022-06-24 | 2022-06-30 |  | 470d | 0d | Purchasing Agent | 40h | 3,200 |  |
| 30 | 5.1.1.2.2 | BID preparation | 15d | 2022-07-01 | 2022-07-21 | 29 | 470d | 0d | S/Contractor | 120h |  |  |
| 31 | 5.1.1.2.3 | BID evaluation | 4d? | 2022-07-22 | 2022-07-27 | 30 | 470d | 0d | Purchasing Agent; Turkish Project Engineer | 64h | 4,480 |  |
| 32 | 5.1.1.2.4 | S/Contract execution | 2d? | 2022-07-28 | 2022-07-29 | 31 | 470d | 0d | Purchasing Agent; S/Contractor | 24h | 1,280 |  |
| 33 | 6 | **Fabrication Drawing Preparation Phase** | 164d | 2022-08-01 | 2023-03-16 |  | 470d |  |  | 1040h | 31,200 |  |
| 34 | 6.1 | **Site Bridges** | 164d | 2022-08-01 | 2023-03-16 |  | 470d |  |  | 1040h | 31,200 | 21-07 20 60 70 |
| 35 | 6.1.1 | **Swing Bridge** | 164d | 2022-08-01 | 2023-03-16 |  | 470d |  |  | 1040h | 31,200 |  |
| 36 | 6.1.1.1 | Cylinder and Locking Devices | 20d | 2022-10-27 | 2022-11-24 | 46 | 641.5d |  | Supplier; Turkish Project Engineer | 320h | 9,600 |  |
| 37 | 6.1.1.2 | Machinery Room | 15d | 2023-02-24 | 2023-03-16 | 27 | 369d | 0d | S/Contractor; Turkish Project Engineer | 240h | 7,200 |  |
| 38 | 6.1.1.3 | Swing Bridge Deck | 30d | 2022-08-01 | 2022-09-09 | 32 | 470d | 0d | S/Contractor; Turkish Project Engineer | 480h | 14,400 |  |
| 39 | 7 | **Product Purchasing Phase** | 144d? | 2022-09-12 | 2023-03-30 |  | 45.5d |  |  | 408h | 21,440 |  |
| 40 | 7.1 | **Site Bridges** | 144d? | 2022-09-12 | 2023-03-30 |  | 45.5d |  |  | 408h | 21,440 | 21-07 20 60 70 |
| 41 | 7.1.1 | **Swing Bridge** | 144d? | 2022-09-12 | 2023-03-30 |  | 45.5d |  |  | 408h | 21,440 |  |
| 42 | 7.1.1.1 | **Cylinder and Locking Devices** | 25.5d? | 2022-09-22 | 2022-10-27 |  | 37.5d | 0d |  | 248h | 8,640 |  |
| 43 | 7.1.1.1.1 | RFP | 5d? | 2022-09-22 | 2022-09-28 | 13 | 37.5d | 0d | Purchasing Agent | 40h | 3,200 |  |
| 44 | 7.1.1.1.2 | BID preparation | 15d | 2022-09-29 | 2022-10-19 | 43 | 37.5d | 0d | Supplier | 120h |  |  |
| 45 | 7.1.1.1.3 | BID evaluation | 4d? | 2022-10-20 | 2022-10-25 | 44 | 37.5d | 0d | Purchasing Agent; Turkish Project Engineer | 64h | 4,480 |  |
| 46 | 7.1.1.1.4 | Supply Contract execution | 1.5d? | 2022-10-26 | 2022-10-27 | 45 | 37.5d | 0d | Purchasing Agent; Supplier | 24h | 960 |  |
| 47 | 7.1.1.2 | Deck materials | 10d | 2022-09-12 | 2022-09-23 | 38 | 470d | 0d | Purchasing Agent | 80h | 6,400 |  |
| 48 | 7.1.1.3 | Electric & mechanical components | 10d | 2023-03-17 | 2023-03-30 | 37 | 369d | 0d | Purchasing Agent | 80h | 6,400 |  |
| 49 | 8 | **Off-Site Fabrication Phase** | 303.5d | 2022-09-26 | 2023-11-23 |  | 61d |  |  | 3200h | 1,540,200 |  |
| 50 | 8.1 | **Site Bridges** | 303.5d | 2022-09-26 | 2023-11-23 |  | 61d |  |  | 3200h | 1,540,200 | 21-07 20 60 70 |
| 51 | 8.1.1 | **Swing Bridge** | 303.5d | 2022-09-26 | 2023-11-23 |  | 61d |  |  | 3200h | 1,540,200 |  |
| 52 | 8.1.1.1 | Cylinder and Locking Devices | 280d | 2022-10-27 | 2023-11-23 | 42 | 37.5d | 0d | Supplier; Swing Bridge Materials [0.1%] | 2240h | 1,540,200 |  |
| 53 | 8.1.1.2 | Deck materials | 60d | 2022-09-26 | 2022-12-16 | 47 | 470d | 0d | Supplier | 480h |  |  |
| 54 | 8.1.1.3 | Electric & mechanical components | 60d | 2023-03-31 | 2023-06-22 | 48 | 369d | 0d | Supplier | 480h |  |  |

| ID | WBS | Task | Duration | Start | Finish | Predecessors | Total slack | Free slack | Resources | Work | Cost | Text2 |
| --- | --- | --- | --- | --- | --- | --- | --- | --- | --- | --- | --- | --- |
| 55 | 9 | **Product Delivery Phase** | 268.5d | 2022-12-19 | 2023-12-28 |  | 239.5d |  |  | 280h | 45,872 |  |
| 56 | 9.1 | **Site Bridges** | 268.5d | 2022-12-19 | 2023-12-28 |  | 239.5d |  |  | 280h | 45,872 | 21-07 20 60 70 |
| 57 | 9.1.1 | **PD-Swing Bridge (M2)** | 268.5d | 2022-12-19 | 2023-12-28 |  | 239.5d |  |  | 280h | 45,872 |  |
| 58 | 9.1.1.1 | Cylinder and Locking Devices | 25d | 2023-11-23 | 2023-12-28 | 52 | 37.5d | 0d | Purchasing Agent; Ship Freight (Origin China) [11 TEU-CN] | 200h | 31,840 |  |
| 59 | 9.1.1.2 | Deck materials | 5d | 2022-12-19 | 2022-12-23 | 53 | 470d | 0d | Purchasing Agent; Ship Freight (Origin Turkey) [32 TEU-TK] | 40h | 9,984 |  |
| 60 | 9.1.1.3 | Electric & mechanical components | 5d | 2023-06-23 | 2023-06-29 | 54 | 369d |  | Purchasing Agent; Ship Freight (Origin Turkey) [4 TEU-TK] | 40h | 4,048 |  |
| 61 | 10 | **Assembly Phase** | 415.5d | 2022-12-26 | 2024-07-29 |  | 142.5d |  |  | 5328h | 7,549,954 |  |
| 62 | 10.1 | **Site Bridges** | 415.5d | 2022-12-26 | 2024-07-29 |  | 142.5d |  |  | 5328h | 7,549,954 | 21-07 20 60 70 |
| 63 | 10.1.1 | **Swing Bridge** | 415.5d | 2022-12-26 | 2024-07-29 |  | 142.5d |  |  | 5328h | 7,549,954 |  |
| 64 | 10.1.1.1 | Cylinder and Locking Devices | 152d | 2023-12-28 | 2024-07-29 | 58 | 37.5d |  | Team of Turkish Workers (5 Workers each) [400%]; Swing Bridge Materials [0.1%] | 4864h | 1,936,400 |  |
| 65 | 10.1.1.2 | Swing Bridge Deck | 88d | 2022-12-26 | 2023-04-26 | 59 | 470d | 415d | Team of Turkish Workers (5 Workers each) [400%]; Swing Bridge Materials [0.1%] | 464h | 5,613,554 |  |
| 66 | 11 | **Erection Phase** | 390d | 2023-09-28 | 2025-03-26 |  | 0d |  |  | 4520h | 3,359,000 |  |
| 67 | 11.1 | Bored Piles | 60d | 2023-09-28 | 2023-12-20 | 16 | 0d |  | Owner Resources | 480h |  | 21-01 10 20 15 |
| 68 | 11.2 | Pits and Bases | 25d | 2023-12-21 | 2024-01-24 | 67 | 0d |  | Owner Resources | 200h |  | 21-01 40 40 |
| 69 | 11.3 | Towers | 20d | 2024-01-25 | 2024-02-21 | 68 | 0d |  | Owner Resources | 160h |  | 21-06 10 20 70 |
| 70 | 11.4 | **Site Bridges** | 285d | 2024-02-22 | 2025-03-26 |  | 0d |  |  | 3680h | 3,359,000 | 21-07 20 60 70 |
| 71 | 11.4.1 | Approach Viaduct | 90d | 2024-02-22 | 2024-06-26 | 69 | 60d |  | Owner Resources | 720h |  |  |
| 72 | 11.4.2 | Central Cable stayed spans | 150d | 2024-02-22 | 2024-09-18 | 69 | 0d |  | Owner Resources | 1200h |  |  |
| 73 | 11.4.3 | **Swing Bridge** | 135d | 2024-09-19 | 2025-03-26 | 71, 72 | 0d |  |  | 1760h | 3,359,000 |  |
| 74 | 11.4.3.1 | Cylinder and Locking Devices | 50d | 2024-09-19 | 2024-11-27 | 64 | 0d |  | Team of Turkish Workers (5 Workers each) [400%] | 600h | 90,000 |  |
| 75 | 11.4.3.2 | Machinery Room | 85d | 2024-11-28 | 2025-03-26 | 74, 60 | 0d |  | Team of Turkish Workers (5 Workers each) [400%]; Swing Bridge Materials [0.1%] | 200h | 3,125,000 |  |
| 76 | 11.4.3.3 | Swing Bridge Deck | 30d | 2024-11-28 | 2025-01-08 | 74, 65 | 55d |  | Team of Turkish Workers (5 Workers each) [400%] | 960h | 144,000 |  |
| 77 | 12 | **Commissioning Start-Up Phase** | 32d | 2025-03-27 | 2025-05-09 |  | 0d |  |  | 768h | 64,768 |  |
| 78 | 12.1 | **CS-Site Bridges (M3)** | 32d | 2025-03-27 | 2025-05-09 |  | 0d |  |  | 768h | 64,768 | 21-07 20 60 70 |
| 79 | 12.1.1 | Swing Bridge | 32d | 2025-03-27 | 2025-05-09 | 73 | 0d |  | Team of Turkish Workers (5 Workers each) [400%]; Turkish Mechanical Engineer [400%]; Turkish Project Engineer | 768h | 64,768 |  |
